# Softtech PİP Şablonu

Schedule from MS Project, 2017-06-12 to 2019-01-31, costs in TL, A marks actual dates.

## Calendars

- Standard: Mon-Fri 08:00-12:00, 13:00-17:00; Sat-Sun off.

## Resources

| Resource | Rate |
| --- | --- |
| Oktay Ardeniz | 1 |
| Serhat Değirmenci | 1 |
| Medine Yılmaz | 1 |
| Murat Bayram | 1 |
| Tülay Akarsu | 1 |
| Mehmet Emin Kahyatepe | 1 |
| Fazlı Ayan | 1 |
| Gülten Topal | 1 |
| Bilgen Ersoy | 1 |
| Engin Aydoğdu | 1 |
| İLHAN ÖZER | 1 |
| Ali Savran | 1 |
| OYA SÜER | 1 |
| OSMAN DEMİRTAŞ | 1 |
| ORÇUN ŞAKAR | 1 |

## Schedule

| ID | WBS | Task | Type | Duration | Start | Finish | Complete | Remaining | Total slack | Constraint | Resources | Work | Actual work | Cost | Project Key | Issue Key |
| --- | --- | --- | --- | --- | --- | --- | --- | --- | --- | --- | --- | --- | --- | --- | --- | --- |
| 1 | 1 | **Tek Pencere** |  | 429d? | 2017-06-12 A | 2019-01-31 | 8% | 396.37d? | 0d |  |  | 11524.6h | 2973.11h | 8,551.52 | P6009 |  |
| 2 | 1.1 | RPM Geçmiş Kayıtlar |  | 88d? | 2017-06-12 A | 2017-10-31 A | 100% |  |  | finish no earlier than 2017-10-31 |  | 2973.11h | 2973.11h |  | P6009 | SKIP |
| 3 | 1.2 | **Yönetim** |  | 113.13d? | 2018-08-27 | 2019-01-31 |  |  | 0d |  |  | 905.04h |  | 905.04 | P6009 | SKIP |
| 4 | 1.2.1 | Proje Yönetim Faaliyetleri |  | 113.13d? | 2018-08-27 | 2019-01-31 |  |  | 0d | finish no earlier than 2019-01-31 | Serhat Değirmenci | 905.04h |  | 905.04 | P6009 |  |
| 5 | 1.3 | **Şube, Internet, Pega Entegrasyonu** |  | 282d? | 2017-07-10 | 2018-08-07 |  |  | 127d |  |  | 3942.48h |  | 3,942.48 | P6009 |  |
| 6 | 1.3.1 | **Milestones** |  | 107d? | 2017-07-10 | 2017-12-06 |  |  | 302d |  |  |  |  |  | P6009 | SKIP |
| 7 | 1.3.1.1 | İGG | milestone | 0d | 2017-07-10 | 2017-07-10 |  |  | 409d | start no earlier than 2017-07-10 | Serhat Değirmenci |  |  |  | P6009 | SKIP |
| 8 | 1.3.1.2 | TGG | milestone | 0d? | 2017-07-24 | 2017-07-24 |  |  | 399d | start no earlier than 2017-07-24 | Serhat Değirmenci |  |  |  | P6009 | SKIP |
| 9 | 1.3.1.3 | THOGG | milestone | 0d? | 2017-10-10 | 2017-10-10 |  |  | 343d | start no earlier than 2017-10-10 | Serhat Değirmenci |  |  |  | P6009 | SKIP |
| 10 | 1.3.1.4 | ÜHOGG | milestone | 0d? | 2017-12-06 | 2017-12-06 |  |  | 302d | start no earlier than 2017-12-06 | Serhat Değirmenci |  |  |  | P6009 | SKIP |
| 11 | 1.3.2 | **Analiz** |  | 87.25d? | 2017-11-01 | 2018-03-02 |  |  | 239.75d |  |  | 698h |  | 698 | P6009 | SKIP |
| 12 | 1.3.2.1 | Analiz |  | 87.25d? | 2017-11-01 | 2018-03-02 |  |  | 239.75d | start no earlier than 2017-11-01 | ORÇUN ŞAKAR | 698h |  | 698 | P6009 |  |
| 13 | 1.3.3 | **Geliştirme** |  | 200d? | 2017-11-01 | 2018-08-07 |  |  | 127d |  |  | 2956.48h |  | 2,956.48 | P6009 | SKIP |
| 14 | 1.3.3.1 | Geliştirme |  | 200d? | 2017-11-01 | 2018-08-07 |  |  | 127d | start no earlier than 2017-11-01 | Serhat Değirmenci | 1600h |  | 1,600 | P6009 |  |
| 15 | 1.3.3.2 | Geliştirme |  | 166.56d? | 2017-11-01 | 2018-06-21 |  |  | 160.44d | start no earlier than 2017-11-01 | Serhat Değirmenci | 1332.48h |  | 1,332.48 | P6009 |  |
| 16 | 1.3.3.3 | Mimari |  | 3d? | 2017-11-01 | 2017-11-03 |  |  | 324d | start no earlier than 2017-11-01 | Serhat Değirmenci | 24h |  | 24 | P6009 |  |
| 17 | 1.3.4 | **Test** |  | 36d? | 2018-04-02 | 2018-05-21 |  |  | 183d |  |  | 288h |  | 288 | P6009 | SKIP |
| 18 | 1.3.4.1 | Test |  | 36d? | 2018-04-02 | 2018-05-21 |  |  | 183d | start no earlier than 2018-04-02 | Bilgen Ersoy | 288h |  | 288 | P6009 |  |
| 19 | 1.3.5 | **Geçiş** |  | 0d? | 2018-01-31 | 2018-01-31 |  |  | 261d |  |  |  |  |  | P6009 | SKIP |
| 20 | 1.3.5.1 | İzleme ve Yaygınlaşma | milestone | 0d? | 2018-01-31 | 2018-01-31 |  |  | 261d | finish no earlier than 2018-01-31 | Serhat Değirmenci |  |  |  | P6009 |  |
| 21 | 1.4 | **NYDO Entegrasyonu** |  | 222d? | 2017-10-02 | 2018-08-07 |  |  | 127d |  |  | 3704h |  | 3,704 | P6009 |  |
| 22 | 1.4.1 | **Milestones** |  | 77d? | 2017-10-02 | 2018-01-17 |  |  | 272d |  |  |  |  |  | P6009 | SKIP |
| 23 | 1.4.1.1 | İGG | milestone | 0d | 2017-10-02 | 2017-10-02 |  |  | 349d | start no earlier than 2017-10-02 | Serhat Değirmenci |  |  |  | P6009 | SKIP |
| 24 | 1.4.1.2 | TGG | milestone | 0d? | 2017-10-16 | 2017-10-16 |  |  | 339d | start no earlier than 2017-10-16 | Serhat Değirmenci |  |  |  | P6009 | SKIP |
| 25 | 1.4.1.3 | THOGG | milestone | 0d? | 2017-12-01 | 2017-12-01 |  |  | 305d | start no earlier than 2017-12-01 | Serhat Değirmenci |  |  |  | P6009 | SKIP |
| 26 | 1.4.1.4 | ÜHOGG | milestone | 0d? | 2018-01-17 | 2018-01-17 |  |  | 272d | start no earlier than 2018-01-17 | Serhat Değirmenci |  |  |  | P6009 | SKIP |

| ID | WBS | Task | Type | Duration | Start | Finish | Total slack | Constraint | Resources | Work | Cost | Issue Key | Project Key |
| --- | --- | --- | --- | --- | --- | --- | --- | --- | --- | --- | --- | --- | --- |
| 27 | 1.4.2 | **Analiz** |  | 77d? | 2017-11-01 | 2018-02-15 | 250d |  |  | 616h | 616 | SKIP | P6009 |
| 28 | 1.4.2.1 | Analiz |  | 77d? | 2017-11-01 | 2018-02-15 | 250d | start no earlier than 2017-11-01 | ORÇUN ŞAKAR | 616h | 616 |  | P6009 |
| 29 | 1.4.3 | **Geliştirme** |  | 200d? | 2017-11-01 | 2018-08-07 | 127d |  |  | 2640h | 2,640 | SKIP | P6009 |
| 30 | 1.4.3.1 | Geliştirme |  | 200d? | 2017-11-01 | 2018-08-07 | 127d | start no earlier than 2017-11-01 | Serhat Değirmenci | 1600h | 1,600 |  | P6009 |
| 31 | 1.4.3.2 | Geliştirme |  | 130d? | 2017-11-01 | 2018-05-01 | 197d | start no earlier than 2017-11-01 | Serhat Değirmenci | 1040h | 1,040 |  | P6009 |
| 32 | 1.4.4 | **Test** |  | 56d? | 2017-12-01 | 2018-02-16 | 249d |  |  | 448h | 448 | SKIP | P6009 |
| 33 | 1.4.4.1 | Test |  | 56d? | 2017-12-01 | 2018-02-16 | 249d | start no earlier than 2017-12-01 | Bilgen Ersoy | 448h | 448 |  | P6009 |
| 34 | 1.4.5 | **Geçiş** |  | 0d? | 2018-02-28 | 2018-02-28 | 242d |  |  |  |  | SKIP | P6009 |
| 35 | 1.4.5.1 | İzleme ve Yaygınlaşma | milestone | 0d? | 2018-02-28 | 2018-02-28 | 242d | start no earlier than 2018-02-28 | Serhat Değirmenci |  |  |  | P6009 |
