# Softtech PİP Şablonu

Schedule from MS Project, 2016-08-01 to 2018-06-29, costs in TL, A marks actual dates.

## Calendars

- Standard: Mon-Fri 08:00-12:00, 13:00-17:00; Sat-Sun off.

## Resources

| Resource | Rate |
| --- | --- |
| Oktay Ardeniz | 1 |
| Serhat Değirmenci | 1 |
| Medine Yılmaz | 1 |
| Murat Bayram | 1 |
| Tülay Akarsu | 1 |
| Mehmet Emin Kahyatepe | 1 |
| Fazlı Ayan | 1 |
| Gülten Topal | 1 |
| Bilgen Ersoy | 1 |
| Engin Aydoğdu | 1 |
| İLHAN ÖZER | 1 |
| Ali Savran | 1 |
| OYA SÜER | 1 |
| OSMAN DEMİRTAŞ | 1 |
| ORÇUN ŞAKAR | 1 |

## Schedule

| ID | WBS | Task | Type | Duration | Start | Finish | Complete | Remaining | Total slack | Constraint | Resources | Work | Actual work | Cost | Project Key | Issue Key |
| --- | --- | --- | --- | --- | --- | --- | --- | --- | --- | --- | --- | --- | --- | --- | --- | --- |
| 1 | 1 | **Akreditifli ithalat/ihracat** |  | 499d? | 2016-08-01 A | 2018-06-29 | 17% | 416.27d? | 0d |  |  | 6515.59h | 2973.11h | 3,542.48 | P6010 |  |
| 2 | 1.1 | RPM Geçmiş Kayıtlar |  | 88d? | 2016-08-01 A | 2017-10-31 A | 100% |  |  | finish no earlier than 2017-10-31 |  | 2973.11h | 2973.11h |  | P6010 | SKIP |
| 3 | 1.2 | **Yönetim** |  | 0d? | 2017-11-01 | 2017-11-01 |  |  | 172d |  |  |  |  |  | P6010 | SKIP |
| 4 | 1.2.1 | Proje Yönetim Faaliyetleri | milestone | 0d? | 2017-11-01 | 2017-11-01 |  |  | 172d | start no earlier than 2017-11-01 | Serhat Değirmenci |  |  |  | P6010 |  |
| 5 | 1.3 | **Akreditifli İthalat** |  | 189d? | 2017-10-09 | 2018-06-29 |  |  | 0d |  |  | 3542.48h |  | 3,542.48 | P6010 |  |
| 6 | 1.3.1 | **Milestones** |  | 162d? | 2017-10-09 | 2018-05-23 |  |  | 27d |  |  |  |  |  | P6010 | SKIP |
| 7 | 1.3.1.1 | İGG | milestone | 0d | 2017-10-09 | 2017-10-09 |  |  | 344d | start no earlier than 2017-10-09 | Serhat Değirmenci |  |  |  | P6010 | SKIP |
| 8 | 1.3.1.2 | TGG | milestone | 0d? | 2017-10-23 | 2017-10-23 |  |  | 334d | start no earlier than 2017-10-23 | Serhat Değirmenci |  |  |  | P6010 | SKIP |
| 9 | 1.3.1.3 | THOGG | milestone | 0d? | 2017-12-25 | 2017-12-25 |  |  | 289d | start no earlier than 2017-12-25 | Serhat Değirmenci |  |  |  | P6010 | SKIP |
| 10 | 1.3.1.4 | ÜHOGG-Pilot | milestone | 0d? | 2018-02-21 | 2018-02-21 |  |  | 247d | start no earlier than 2018-02-21 | Serhat Değirmenci |  |  |  | P6010 | SKIP |
| 11 | 1.3.1.5 | ÜHOGG-Yaygınlaşma | milestone | 0d? | 2018-05-23 | 2018-05-23 |  |  | 182d | start no earlier than 2018-05-23 | Serhat Değirmenci |  |  |  | P6010 | SKIP |
| 12 | 1.3.2 | **Analiz** |  | 87.25d? | 2017-11-01 | 2018-03-02 |  |  | 84.75d |  |  | 698h |  | 698 | P6010 | SKIP |
| 13 | 1.3.2.1 | Analiz |  | 87.25d? | 2017-11-01 | 2018-03-02 |  |  | 239.75d | start no earlier than 2017-11-01 | ORÇUN ŞAKAR | 698h |  | 698 | P6010 |  |
| 14 | 1.3.3 | **Geliştirme** |  | 166.56d? | 2017-11-01 | 2018-06-21 |  |  | 5.44d |  |  | 2556.48h |  | 2,556.48 | P6010 | SKIP |
| 15 | 1.3.3.1 | Geliştirme |  | 150d | 2017-11-01 | 2018-05-29 |  |  | 22d | start no earlier than 2017-11-01 | Serhat Değirmenci | 1200h |  | 1,200 | P6010 |  |
| 16 | 1.3.3.2 | Geliştirme |  | 166.56d? | 2017-11-01 | 2018-06-21 |  |  | 160.44d | start no earlier than 2017-11-01 | Serhat Değirmenci | 1332.48h |  | 1,332.48 | P6010 |  |
| 17 | 1.3.3.3 | Mimari |  | 3d? | 2017-11-01 | 2017-11-03 |  |  | 324d | start no earlier than 2017-11-01 | Serhat Değirmenci | 24h |  | 24 | P6010 |  |
| 18 | 1.3.4 | **Test** |  | 36d? | 2017-11-01 | 2017-12-20 |  |  | 136d |  |  | 288h |  | 288 | P6010 | SKIP |
| 19 | 1.3.4.1 | Test |  | 36d? | 2017-11-01 | 2017-12-20 |  |  | 291d | start no earlier than 2017-11-01 | Bilgen Ersoy | 288h |  | 288 | P6010 |  |
| 20 | 1.3.5 | **Geçiş** |  | 0d? | 2018-06-29 | 2018-06-29 |  |  | 0d |  |  |  |  |  | P6010 | SKIP |
| 21 | 1.3.5.1 | İzleme ve Yaygınlaşma | milestone | 0d? | 2018-06-29 | 2018-06-29 |  |  | 0d | start no earlier than 2018-06-29 | Serhat Değirmenci |  |  |  | P6010 |  |
